# ProyectoABP

Schedule from MS Project, 2017-09-11 to 2018-05-30, status date 2017-11-15, costs in €, A marks actual dates.
Schlumberger

## Calendars

- Estándar: Mon-Fri 09:00-13:00, 15:00-19:00; Sat-Sun off.

## Resources

| Resource | Rate |
| --- | --- |
| Alexei | 20 |
| Adrián | 20 |
| Laura | 20 |
| Luis | 20 |
| Pablo | 20 |

## Schedule

| ID | WBS | Task | Type | Duration | Start | Finish | Predecessors | Complete | Remaining | Actual start | Baseline start | Baseline finish | Baseline duration | Total slack | Free slack | Constraint | Deadline | Resources | Work | Actual work | Cost | Baseline cost | Actual cost |
| --- | --- | --- | --- | --- | --- | --- | --- | --- | --- | --- | --- | --- | --- | --- | --- | --- | --- | --- | --- | --- | --- | --- | --- |
| 1 | 1 | **Hito 0** |  | 28d | 2017-09-11 09:00 | 2017-10-18 19:00 A |  | 100% |  | 2017-09-18 09:00 |  |  |  |  |  |  | 2017-10-18 19:00 |  | 126.53h | 126.53h | 2,530.51 |  | 2,530.51 |
| 2 | 1.1 | [PM] Rellenar documento de Concepto del proyecto |  | 1d | 2017-09-18 09:00 A | 2017-09-18 19:00 A |  | 100% |  |  |  |  |  |  |  | start no earlier than 2017-09-18 09:00 | 2017-10-18 19:00 | Adrián [20%]; Alexei [20%]; Laura [20%]; Luis [20%]; Pablo [20%] | 8h | 8h | 160 |  | 160 |
| 3 | 1.2 | [PM] Rellenar versión inicial del documento Especificación |  | 1d | 2017-09-19 09:00 A | 2017-09-19 19:00 A | 2 | 100% |  |  |  |  |  |  |  |  | 2017-10-18 19:00 | Adrián [20%]; Alexei [20%]; Laura [20%]; Luis [20%]; Pablo [20%] | 8h | 8h | 160 |  | 160 |
| 4 | 1.3 | [PM] Completar y revisar documento Especificación |  | 1d | 2017-09-20 09:00 A | 2017-09-20 19:00 A | 3 | 100% |  |  |  |  |  |  |  |  | 2017-10-18 19:00 | Adrián [20%]; Alexei [20%]; Laura [20%]; Luis [20%]; Pablo [20%] | 8h | 8h | 160 |  | 160 |
| 5 | 1.4 | **[PM] Elaborar el Presupuesto (hoja de cálculo)** |  | 6d | 2017-09-21 09:00 A | 2017-09-28 19:00 A | 2 | 100% |  |  |  |  |  |  |  |  | 2017-10-18 19:00 |  | 46.5h | 46.5h | 930 |  | 930 |
| 6 | 1.4.1 | [PM] Rellenar del presupuesto |  | 3.75d | 2017-09-25 11:00 A | 2017-09-28 19:00 A | 8 | 100% |  |  |  |  |  |  |  |  |  | Adrián [20%]; Alexei [20%]; Laura [20%]; Luis [20%]; Pablo [20%] | 30h | 30h | 600 |  | 600 |
| 7 | 1.4.2 | [PM] Reunirse con profesores |  | 2d | 2017-09-21 09:00 A | 2017-09-22 19:00 A | 2 | 100% |  |  |  |  |  |  |  |  |  | Adrián [20%]; Alexei [20%]; Laura [20%]; Luis [20%]; Pablo [20%] | 16h | 16h | 320 |  | 320 |
| 8 | 1.4.3 | [PM] Rellenar documentos adicionales |  | 0.25d | 2017-09-25 09:00 A | 2017-09-25 11:00 A | 7 | 100% |  |  |  |  |  |  |  |  |  | Adrián [5%]; Alexei [5%]; Laura [5%]; Luis [5%]; Pablo [5%] | 0.5h | 0.5h | 10 |  | 10 |
| 9 | 1.5 | [PM] Crear WBS del proyecto en Project |  | 3d | 2017-09-29 09:00 A | 2017-10-03 19:00 A | 5, 6, 7, 8 | 100% |  |  |  |  |  |  |  |  | 2017-10-18 19:00 | Adrián | 24h | 24h | 480 |  | 480 |
| 10 | 1.6 | [PM] Crear plan general (Tareas y precedencias básicas) en Project |  | 3d | 2017-10-16 09:00 A | 2017-10-18 19:00 A | 9 | 100% |  |  |  |  |  |  |  | finish no earlier than 2017-10-18 19:00 | 2017-10-18 19:00 | Alexei | 24h | 24h | 480 |  | 480 |
| 11 | 1.7 | **[TDS] Rellenar la Cue Sheet [1/6]** |  | 0.88d | 2017-10-04 09:00 A | 2017-10-04 18:02 A |  | 100% |  |  |  |  |  |  |  |  |  | Luis [25%]; Pablo [25%]; Adrián [25%] | 8.03h | 8.03h | 160.51 |  | 160.51 |
| 12 | 1.7.1 | [TDS] Elaboración Cue Sheet inicial |  | 0.88d | 2017-10-04 09:00 A | 2017-10-04 18:02 A |  | 100% |  |  |  |  |  |  |  | start no earlier than 2017-10-04 09:00 | 2017-10-18 19:00 | Adrián [25%]; Luis [25%]; Pablo [25%] | 5.28h | 5.28h | 105.6 |  | 105.6 |
| 13 | 2 | **Hito 1** |  | 53.25d? | 2017-10-19 15:00 A | 2018-01-02 17:00 | 1 | 25% | 39.93d? |  |  |  |  | 106.25d | 3.25d |  | 2018-01-12 19:00 |  | 485.87h | 222.03h | 9,717.33 |  | 4,440.53 |
| 14 | 2.1 | **Iteración 1** |  | 9.25d | 2017-10-19 15:00 A | 2017-11-01 17:00 A | 1 | 100% |  |  | 2017-10-19 15:00 | 2017-11-01 13:00 | 9d |  |  |  |  |  | 47.72h | 47.72h | 954.48 | 993.36 | 954.48 |
| 15 | 2.1.1 | [PM] Registrar tiempos y % de realización de tareas en Project (1/5) |  | 8.5d | 2017-10-19 15:00 A | 2017-10-31 19:00 A |  | 100% |  |  | 2017-10-19 15:00 | 2017-10-31 19:00 | 8.5d |  |  | finish no earlier than 2017-10-31 19:00 |  | Adrián [1%]; Alexei [1%]; Laura [1%]; Luis [1%]; Pablo [1%] | 3.4h | 3.4h | 68 | 68 | 68 |
| 16 | 2.1.2 | [PD] Bocetar cartel |  | 0.75d | 2017-10-20 09:00 A | 2017-10-20 17:00 A |  | 100% |  |  | 2017-10-20 09:00 | 2017-10-20 17:00 | 0.75d |  |  | start no earlier than 2017-10-20 09:00 |  | Alexei [25%]; Laura [25%]; Luis [25%] | 4.5h | 4.5h | 90 | 90 | 90 |
| 17 | 2.1.3 | [TAG] Instalar librería matemática (glm/glmatriz) |  | 0.5d | 2017-10-24 09:00 A | 2017-10-24 13:00 A |  | 100% |  |  | 2017-10-24 09:00 | 2017-10-24 13:00 | 0.5d |  |  | start no earlier than 2017-10-24 09:00 |  | Adrián [8%]; Alexei [8%]; Laura [8%]; Luis [8%]; Pablo [8%] | 1.6h | 1.6h | 32 | 32 | 32 |
| 18 | 2.1.4 | [TAG] Instalar librería de lectura de mallas (assimp…) |  | 1.25d | 2017-10-24 17:00 A | 2017-10-25 19:00 A |  | 100% |  |  | 2017-10-24 17:00 | 2017-10-25 19:00 | 1.25d |  |  | finish no earlier than 2017-10-25 19:00 |  | Adrián [13%]; Alexei [13%]; Laura [13%]; Luis [13%]; Pablo [13%] | 6.5h | 6.5h | 130 | 130 | 130 |
| 19 | 2.1.5 | [TAG] Instalar librería de entrada/salida (SFML…) |  | 1.25d | 2017-10-24 17:00 A | 2017-10-25 19:00 A |  | 100% |  |  | 2017-10-24 17:00 | 2017-10-25 19:00 | 1.25d |  |  | finish no earlier than 2017-10-25 19:00 |  | Adrián [13%]; Alexei [13%]; Laura [13%]; Luis [13%]; Pablo [13%] | 6.5h | 6.5h | 130 | 130 | 130 |
| 20 | 2.1.6 | [PM] Detallar plan iteraciones del mes de Noviembre. Creación Subtareas y precedencias en Project (1/2) |  | 1.2d | 2017-10-24 09:00 A | 2017-10-25 10:36 A | 10 | 100% |  |  | 2017-10-24 09:00 | 2017-10-26 12:12 | 2.4d |  |  | start no earlier than 2017-10-24 09:00 |  | Adrián [21%]; Alexei [21%]; Laura [5%]; Luis [5%]; Pablo [5%] | 5.47h | 5.47h | 109.44 | 218.88 | 109.44 |
| 21 | 2.1.7 | [TDS] Añadir elementos sonoros a la Cue Sheet (1/5) |  | 0.25d | 2017-10-26 09:00 A | 2017-10-26 11:00 A | 12 | 100% |  |  | 2017-10-26 09:00 | 2017-10-26 11:00 | 0.25d |  |  | start no earlier than 2017-10-26 09:00 |  | Luis [13%]; Pablo [13%]; Adrián [13%] | 0.78h | 0.78h | 15.6 | 15.6 | 15.6 |
| 22 | 2.1.8 | **[PD] Crear vídeo con animación del logo de la empresa [1/5]** |  | 0.75d | 2017-10-27 09:00 A | 2017-10-27 17:00 A |  | 100% |  |  |  |  |  |  |  |  |  | Alexei [25%]; Laura [25%]; Luis [25%] | 9h | 9h | 180 |  | 180 |
| 23 | 2.1.8.1 | [PD] Bocetar logo |  | 0.75d | 2017-10-27 09:00 A | 2017-10-27 17:00 A |  | 100% |  |  | 2017-10-27 09:00 | 2017-10-27 17:00 | 0.75d |  |  | start no earlier than 2017-10-27 09:00 |  | Alexei [25%]; Laura [25%]; Luis [25%] | 4.5h | 4.5h | 90 | 90 | 90 |
| 24 | 2.1.9 | [PM] Detallar plan iteraciones del mes de Noviembre. Asignar recursos a las tareas en Project (1/2) |  | 1.2d | 2017-10-27 09:00 A | 2017-10-30 10:36 A | 20 | 100% |  |  | 2017-10-27 09:00 | 2017-10-31 12:12 | 2.4d |  |  | start no earlier than 2017-10-27 09:00 |  | Adrián [21%]; Alexei [21%]; Laura [5%]; Luis [5%]; Pablo [5%] | 5.47h | 5.47h | 109.44 | 218.88 | 109.44 |
| 25 | 2.1.10 | [PM] Realizar informe iteración 1 |  | 0.75d | 2017-11-01 09:00 A | 2017-11-01 17:00 A | 20, 24, 16, 23 | 100% |  |  | 2017-11-01 09:00 | 2017-11-01 13:00 | 0.5d |  |  | start no earlier than 2017-11-01 09:00 |  | Laura [25%]; Luis [25%]; Pablo [25%] | 4.5h | 4.5h | 90 |  | 90 |
| 26 | 2.1.11 | Objetivo Iteración 1 | milestone | 0d | 2017-11-01 17:00 A | 2017-11-01 17:00 A | 25 | 100% |  |  | 2017-11-01 13:00 | 2017-11-01 13:00 | 0d |  |  |  |  |  |  |  |  |  |  |

| ID | WBS | Task | Type | Duration | Start | Finish | Predecessors | Complete | Remaining | Actual start | Baseline 1 start | Baseline 1 finish | Total slack | Free slack | Constraint | Resources | Work | Actual work | Cost | Actual cost |
| --- | --- | --- | --- | --- | --- | --- | --- | --- | --- | --- | --- | --- | --- | --- | --- | --- | --- | --- | --- | --- |
| 27 | 2.2 | **Iteración 2** |  | 10d | 2017-11-02 09:00 | 2017-11-15 19:00 | 14 | 99% | 0d | 2017-11-01 15:00 | 2017-11-02 09:00 | 2017-11-15 19:00 |  |  |  |  | 174.3h | 174.3h | 3,486.05 | 3,486.05 |
| 28 | 2.2.1 | [PM] Registrar tiempos y % de realización de tareas en Project (2/5) |  | 9.5d | 2017-11-01 15:00 A | 2017-11-14 19:00 A |  | 100% |  |  | 2017-11-01 15:00 | 2017-11-14 19:00 |  |  | finish no earlier than 2017-11-14 19:00 | Adrián [1%]; Alexei [1%]; Laura [1%]; Luis [1%]; Pablo [1%] | 3.8h | 3.8h | 76 | 76 |
| 29 | 2.2.2 | [V1] Iniciar el documento de diseño de mecánicas de los NPCs |  | 0.5d | 2017-11-02 09:00 A | 2017-11-02 13:00 A |  | 100% |  |  | 2017-11-02 09:00 | 2017-11-02 13:00 |  |  |  | Adrián [13%]; Alexei [13%]; Laura [13%]; Luis [13%]; Pablo [13%] | 2.6h | 2.6h | 52 | 52 |
| 30 | 2.2.3 | [V1] Iniciar el documento de diseño de toma de decisión: espacio y métodos |  | 0.94d | 2017-11-02 09:00 A | 2017-11-02 18:31 A |  | 100% |  |  | 2017-11-02 09:00 | 2017-11-02 18:31 |  |  |  | Adrián [24%]; Alexei [24%]; Laura [24%]; Luis [24%]; Pablo [24%] | 9.02h | 9.02h | 180.48 | 180.48 |
| 31 | 2.2.4 | [V1] Iniciar el documento de diseño técnico del motor de IA |  | 0.94d | 2017-11-03 09:28 A | 2017-11-03 19:00 A |  | 100% |  |  | 2017-11-03 09:28 | 2017-11-03 19:00 |  |  | finish no earlier than 2017-11-03 19:00 | Adrián [24%]; Alexei [24%]; Laura [24%]; Luis [24%]; Pablo [24%] | 9.02h | 9.02h | 180.48 | 180.48 |
| 32 | 2.2.5 | **[V2] Diseñar e implementar de la arquitectura basada en componentes (diagrama de clases e implementación) [1/4]** |  | 0.5d | 2017-11-03 09:00 A | 2017-11-03 13:00 A |  | 100% |  |  |  |  |  |  |  |  | 10h | 10h | 200 | 200 |
| 33 | 2.2.5.1 | [V2] Diseño inicial de la arquitectura basada en componentes |  | 0.5d | 2017-11-03 09:00 A | 2017-11-03 13:00 A |  | 100% |  |  | 2017-11-03 09:00 | 2017-11-03 13:00 |  |  | start no earlier than 2017-11-03 09:00 | Adrián [50%]; Alexei [50%]; Laura [50%]; Luis [50%]; Pablo [50%] | 10h | 10h | 200 | 200 |
| 34 | 2.2.6 | [RV] Bocetar los personajes |  | 0.25d | 2017-11-03 09:00 A | 2017-11-03 11:00 A |  | 100% |  |  | 2017-11-03 09:00 | 2017-11-03 11:00 |  |  | start no earlier than 2017-11-03 09:00 | Alexei [25%]; Laura [25%]; Luis [25%]; Adrián [13%]; Pablo [13%] | 2.02h | 2.02h | 40.4 | 40.4 |
| 35 | 2.2.7 | [V2] Definición inicial del formato para la definición de niveles (1/2) |  | 0.25d | 2017-11-06 09:00 A | 2017-11-06 11:00 A |  | 100% |  |  | 2017-11-06 09:00 | 2017-11-06 11:00 |  |  | start no earlier than 2017-11-06 09:00 | Adrián [25%]; Alexei [25%]; Laura [25%]; Luis [25%]; Pablo [25%] | 2.5h | 2.5h | 50 | 50 |
| 36 | 2.2.8 | [V2] Instalación irrLicht |  | 0.5d | 2017-11-06 09:00 A | 2017-11-06 13:00 A |  | 100% |  |  | 2017-11-06 09:00 | 2017-11-06 13:00 |  |  | start no earlier than 2017-11-06 09:00 | Adrián [9%]; Alexei [9%]; Laura [9%]; Luis [9%]; Pablo [9%] | 1.8h | 1.8h | 36 | 36 |
| 37 | 2.2.9 | Instalar Manjaro |  | 1d | 2017-11-02 09:00 A | 2017-11-02 19:00 A |  | 100% |  |  |  |  |  |  |  | Adrián [12%]; Alexei [12%]; Laura [12%]; Luis [12%]; Pablo [12%] | 4.8h | 4.8h | 96 | 96 |
| 38 | 2.2.10 | [TAG] Instalar librería matemática (glm/glmatriz) |  | 0.5d | 2017-11-09 09:00 A | 2017-11-09 13:00 A |  | 100% |  |  |  |  |  |  | start no earlier than 2017-11-09 09:00 | Adrián [8%]; Alexei [8%]; Laura [8%]; Luis [8%]; Pablo [8%] | 1.6h | 1.6h | 32 | 32 |
| 39 | 2.2.11 | [TAG] Instalar librería de lectura de mallas (assimp…) |  | 1.25d | 2017-11-09 09:00 A | 2017-11-10 11:00 A |  | 100% |  |  |  |  |  |  | start no earlier than 2017-11-09 09:00 | Adrián [13%]; Alexei [13%]; Laura [13%]; Luis [13%]; Pablo [13%] | 6.5h | 6.5h | 130 | 130 |
| 40 | 2.2.12 | [TAG] Instalar librería de entrada/salida (SFML…) |  | 1.25d | 2017-11-10 09:00 A | 2017-11-13 11:00 A |  | 100% |  |  |  |  |  |  | start no earlier than 2017-11-10 09:00 | Adrián [13%]; Alexei [13%]; Laura [13%]; Luis [13%]; Pablo [13%] | 6.5h | 6.5h | 130 | 130 |
| 41 | 2.2.13 | **[V1] Hacer el sistema de toma de decisión con Lógica Difusa [1/3]** |  | 3d | 2017-11-07 09:00 A | 2017-11-09 19:00 A |  | 100% |  |  |  |  |  |  |  |  | 20.16h | 20.16h | 403.2 | 403.2 |
| 42 | 2.2.13.1 | [V1] Aprender y plantear inicialmente el sistema de Lógica Difusa |  | 3d | 2017-11-07 09:00 A | 2017-11-09 19:00 A | 36, 30, 31 | 100% |  |  | 2017-11-07 09:00 | 2017-11-09 19:00 |  |  | start no earlier than 2017-11-07 09:00 | Adrián [28%]; Alexei [28%]; Pablo [28%] | 20.16h | 20.16h | 403.2 | 403.2 |
| 43 | 2.2.14 | **[V1] Hacer el sistema de Waypoints para pathfinding continuo [1/3]** |  | 3d | 2017-11-07 09:00 A | 2017-11-09 19:00 A |  | 100% |  |  |  |  |  |  |  |  | 25.2h | 25.2h | 504 | 504 |
| 44 | 2.2.14.1 | [V1] Aprender y plantear inicialmente el sistema de Waypoints |  | 3d | 2017-11-07 09:00 A | 2017-11-09 19:00 A | 36, 30, 31 | 100% |  |  | 2017-11-07 09:00 | 2017-11-09 19:00 |  |  | start no earlier than 2017-11-07 09:00 | Adrián [35%]; Alexei [35%]; Pablo [35%] | 25.2h | 25.2h | 504 | 504 |
| 45 | 2.2.15 | [PM] Rellenar documento Gestión de riesgos |  | 0.5d | 2017-11-08 09:00 A | 2017-11-08 13:00 A |  | 100% |  |  | 2017-11-08 09:00 | 2017-11-08 13:00 |  |  | start no earlier than 2017-11-08 09:00 | Adrián [36%]; Alexei [36%]; Laura [66%]; Luis [66%]; Pablo [36%] | 9.6h | 9.6h | 192 | 192 |
| 46 | 2.2.16 | [TDS] Añadir sonidos externos [1/4] |  | 0.4d | 2017-11-10 09:00 A | 2017-11-10 12:12 A |  | 100% |  |  | 2017-11-10 09:00 | 2017-11-10 12:12 |  |  | start no earlier than 2017-11-10 09:00 | Adrián [40%]; Luis [40%]; Pablo [40%] | 3.84h | 3.84h | 76.8 | 76.8 |
| 47 | 2.2.17 | [TDS] Rellenar hoja de metadatos [1/4] |  | 0.12d | 2017-11-10 12:12 A | 2017-11-10 15:09 A | 46 | 100% |  |  | 2017-11-10 12:12 | 2017-11-10 15:09 |  |  | start no earlier than 2017-11-10 09:00 | Adrián [13%]; Luis [13%]; Pablo [13%] | 0.37h | 0.37h | 7.49 | 7.49 |
| 48 | 2.2.18 | [TDS] Rellenar la Cue Sheet [2/6] |  | 0.25d | 2017-11-10 09:00 A | 2017-11-10 11:00 A |  | 100% |  |  | 2017-11-10 09:00 | 2017-11-10 11:00 |  |  | start no earlier than 2017-11-10 09:00 | Luis [13%]; Pablo [13%]; Adrián [13%] | 0.78h | 0.78h | 15.6 | 15.6 |
| 49 | 2.2.19 | [V2] Realizar del sistema de control del player por motor de físicas 2D, dynamic o kinematic |  | 3d | 2017-11-07 09:00 A | 2017-11-09 19:00 A | 29, 30, 36 | 100% |  |  | 2017-11-07 09:00 | 2017-11-09 19:00 |  |  | start no earlier than 2017-11-07 09:00 | Laura [52%]; Luis [52%] | 24.96h | 24.96h | 499.2 | 499.2 |
| 50 | 2.2.20 | **[PD] Crear vídeo con animación del logo de la empresa [2/5]** |  | 2d | 2017-11-13 09:00 A | 2017-11-14 19:00 A | 23 | 100% |  |  |  |  |  |  |  | Alexei [21%]; Laura [21%]; Luis [21%] | 20.16h | 20.16h | 403.2 | 403.2 |
| 51 | 2.2.20.1 | [PD] Hacer diseño final del logo de la empresa |  | 2d | 2017-11-13 09:00 A | 2017-11-14 19:00 A | 23 | 100% |  |  | 2017-11-13 09:00 | 2017-11-14 19:00 |  |  | start no earlier than 2017-11-13 09:00 | Alexei [21%]; Laura [21%]; Luis [21%] | 10.08h | 10.08h | 201.6 | 201.6 |
| 52 | 2.2.21 | [PM] Detallar plan iteraciones del mes de Noviembre. Creación Subtareas y precedencias en Project (2/2) |  | 0.5d | 2017-11-14 09:00 A | 2017-11-14 13:00 A | 20, 24 | 100% |  |  | 2017-11-14 09:00 | 2017-11-14 13:00 |  |  | start no earlier than 2017-11-14 09:00 | Adrián [21%]; Alexei [21%]; Laura [5%]; Luis [5%]; Pablo [5%] | 2.28h | 2.28h | 45.6 | 45.6 |
| 53 | 2.2.22 | [PM] Detallar plan iteraciones del mes de Noviembre. Asignar recursos a las tareas en Project (2/2) |  | 0.5d | 2017-11-14 15:00 A | 2017-11-14 19:00 A | 52 | 100% |  |  | 2017-11-14 15:00 | 2017-11-14 19:00 |  |  | finish no earlier than 2017-11-06 19:00 | Adrián [21%]; Alexei [21%]; Laura [5%]; Luis [5%]; Pablo [5%] | 2.28h | 2.28h | 45.6 | 45.6 |
| 54 | 2.2.23 | [PM] Realizar informe iteración 2 |  | 0.75d | 2017-11-15 09:00 A | 2017-11-15 17:00 A | 28, 29, 30, 49, 31, 33, 35, 45, 51, 52, 53 | 100% |  |  | 2017-11-15 09:00 | 2017-11-15 17:00 |  |  |  | Laura [25%]; Luis [25%]; Pablo [25%] | 4.5h | 4.5h | 90 | 90 |
| 55 | 2.2.24 | Objetivo iteración 2 | milestone | 0d | 2017-11-15 17:00 | 2017-11-15 17:00 | 54 |  |  |  | 2017-11-15 17:00 | 2017-11-15 17:00 | -23.2d | 0d |  |  |  |  |  |  |

| ID | WBS | Task | Type | Duration | Start | Finish | Predecessors | Total slack | Free slack | Constraint | Resources | Work | Cost |
| --- | --- | --- | --- | --- | --- | --- | --- | --- | --- | --- | --- | --- | --- |
| 56 | 2.3 | **Iteración 3** |  | 10d | 2017-11-16 09:00 | 2017-11-29 19:00 | 27 |  |  |  |  | 263.84h | 5,276.8 |
| 57 | 2.3.1 | [PM] Registrar tiempos y % de realización de tareas en Project (3/5) |  | 10d | 2017-11-16 09:00 | 2017-11-29 19:00 |  | 120d | 0d | start no earlier than 2017-11-16 09:00 | Adrián [1%]; Alexei [1%]; Laura [1%]; Luis [1%]; Pablo [1%] | 4h | 80 |
| 58 | 2.3.2 | [PM] Hacer reuniones de seguimiento diarias de 15 min |  | 10d | 2017-11-16 09:00 | 2017-11-29 19:00 |  | 130d |  | start no earlier than 2017-11-16 09:00 | Adrián [3%]; Alexei [3%]; Laura [3%]; Luis [3%]; Pablo [3%] | 12h | 240 |
| 59 | 2.3.3 | [V2] Decidir y aprender sobre el motor de físicas a utilizar |  | 1d | 2017-11-16 09:00 | 2017-11-16 19:00 |  | -23.45d | 0d |  | Luis [96%]; Laura [29%] | 10h | 200 |
| 60 | 2.3.4 | [RV] Bocetar los elementos |  | 2d | 2017-11-16 09:00 | 2017-11-17 19:00 |  | 138d |  | finish no earlier than 2017-11-17 19:00 | Laura [50%] | 8h | 160 |
| 61 | 2.3.5 | [V1] Hacer sistema de percepción sensorial (vista, oído, olfato, canales…)[1/2] |  | 3d | 2017-11-16 09:00 | 2017-11-20 19:00 | 29, 30, 31 | 137d |  | finish no earlier than 2017-11-20 19:00 | Adrián [34%]; Alexei [34%]; Pablo [34%] | 24.48h | 489.6 |
| 62 | 2.3.6 | **[TDS] Integrar del motor de audio en el juego con prueba de concepto[1/2]** |  | 3d | 2017-11-17 09:00 | 2017-11-21 19:00 |  | -21.45d | 0d |  |  | 11.84h | 236.8 |
| 63 | 2.3.6.1 | [TDS] Instalar FMOD STUDIO y FMOD STUDIO API |  | 1d | 2017-11-17 09:00 | 2017-11-17 19:00 |  | -21.45d | 0d | start no earlier than 2017-11-17 09:00 | Adrián [12%]; Luis [12%]; Pablo [12%] | 2.88h | 57.6 |
| 64 | 2.3.6.2 | [TDS] Hacer prototipo de fachada de audio |  | 2d | 2017-11-20 09:00 | 2017-11-21 19:00 | 63 | -21.45d | 0d | finish no earlier than 2017-11-21 19:00 | Adrián [56%] | 8.96h | 179.2 |
| 65 | 2.3.7 | **[PD] Crear vídeo con animación del logo de la empresa [3/5]** |  | 1d | 2017-11-17 09:00 | 2017-11-17 19:00 | 50 | -19.45d | 0d |  |  | 6h | 120 |
| 66 | 2.3.7.1 | [PD] Hacer storyboard de la animación |  | 1d | 2017-11-17 09:00 | 2017-11-17 19:00 | 51 | -19.45d | 0d | start no earlier than 2017-11-17 09:00 | Alexei [25%]; Laura [25%]; Luis [25%] | 6h | 120 |
| 67 | 2.3.8 | **[V2] Diseñar e implementar de la arquitectura basada en componentes (diagrama de clases e implementación) [2/4]** |  | 5d | 2017-11-20 09:00 | 2017-11-24 19:00 |  | -24.45d | 0d |  |  | 50.4h | 1,008 |
| 68 | 2.3.8.1 | [V2] Diseñar e implementar la arquitectura de componentes final [1/3] |  | 5d | 2017-11-20 09:00 | 2017-11-24 19:00 | 33, 59 | -24.45d | 0d | finish no earlier than 2017-11-24 19:00 | Luis [63%]; Laura [63%] | 50.4h | 1,008 |
| 69 | 2.3.9 | [V1] Hacer sistema de gestión de eventos (Trigger System/Event Manager) [1/2] |  | 5d | 2017-11-20 09:00 | 2017-11-24 19:00 | 32 | 133d |  | finish no earlier than 2017-11-24 19:00 | Luis [31%]; Laura [31%] | 24.8h | 496 |
| 70 | 2.3.10 | **[TDS] Obtener sonidos externos [1/2]** |  | 1d | 2017-11-21 09:00 | 2017-11-21 19:00 |  | -21.45d | 0d |  |  | 9.92h | 198.4 |
| 71 | 2.3.10.1 | [TDS] Obtener biblioteca sonidos externos |  | 1d | 2017-11-21 09:00 | 2017-11-21 19:00 |  | -21.45d | 0d | start no earlier than 2017-11-21 09:00 | Adrián [40%]; Pablo [84%] | 9.92h | 198.4 |
| 72 | 2.3.11 | **[V1] Hacer el sistema de toma de decisión con Lógica Difusa [2/3]** |  | 3d | 2017-11-22 09:00 | 2017-11-24 19:00 |  | -24.45d | 0d |  |  | 19.44h | 388.8 |
| 73 | 2.3.11.1 | [V1] Hacer prototipo inicial del sistema de toma de decisión con lógica difusa |  | 3d | 2017-11-22 09:00 | 2017-11-24 19:00 | 42, 29, 30, 31 | -24.45d | 0d | finish no earlier than 2017-11-24 19:00 | Adrián [27%]; Alexei [27%]; Pablo [27%] | 19.44h | 388.8 |
| 74 | 2.3.12 | [V1] Hacer el sistema de Waypoints para pathfinding continuo [2/3] |  | 3d | 2017-11-22 09:00 | 2017-11-24 19:00 | 44, 29, 30, 31 | 133d |  | finish no earlier than 2017-11-24 19:00 | Adrián [34%]; Alexei [34%]; Pablo [34%] | 24.48h | 489.6 |
| 75 | 2.3.13 | [PM] Aplicar el modelo EVA en Project |  | 1d | 2017-11-27 09:00 | 2017-11-27 19:00 |  | 131.5d | 1d | start no earlier than 2017-11-27 09:00 | Adrián [56%]; Alexei [56%] | 8.96h | 179.2 |
| 76 | 2.3.14 | [V2] [RETRASO] Realizar el sistema de control del player por motor de físicas 2D, dynamic o kinematic |  | 2d | 2017-11-27 09:00 | 2017-11-28 19:00 | 49, 59 | 130.5d | 0d | start no earlier than 2017-11-27 09:00 | Laura [58%]; Luis [58%] | 18.56h | 371.2 |
| 77 | 2.3.15 | **[TDS] Hacer grabaciones propias [1/2]** |  | 2d | 2017-11-27 09:00 | 2017-11-28 19:00 |  |  |  |  |  | 14.88h | 297.6 |
| 78 | 2.3.15.1 | [TDS] Grabar voces personajes [2/4] |  | 2d | 2017-11-27 09:00 | 2017-11-28 19:00 | 34 | 131d |  | start no earlier than 2017-11-27 09:00 | Adrián [31%]; Luis [31%]; Pablo [31%] | 14.88h | 297.6 |
| 79 | 2.3.16 | [PM] Detallar plan iteraciones del mes de Diciembre. Creación Subtareas y precedencias en Project (1/2) |  | 0.5d | 2017-11-28 09:00 | 2017-11-28 13:00 |  | 130.5d | 0d | start no earlier than 2017-11-28 09:00 | Alexei [60%]; Adrián [60%] | 4.8h | 96 |
| 80 | 2.3.17 | [PM] Detallar plan iteraciones del mes de Diciembre. Asignar recursos a las tareas en Project (1/2) |  | 0.5d | 2017-11-28 15:00 | 2017-11-28 19:00 | 79 | 130.5d | 0d | finish no earlier than 2017-11-20 19:00 | Alexei [60%]; Adrián [60%] | 4.8h | 96 |
| 81 | 2.3.18 | [TDS] Rellenar Cue Sheet [3/6] |  | 0.5d | 2017-11-29 09:00 | 2017-11-29 13:00 |  | 130.5d |  | start no earlier than 2017-11-29 09:00 | Adrián [8%]; Luis [8%]; Pablo [8%] | 0.96h | 19.2 |
| 82 | 2.3.19 | [TDS] Rellenar Hoja de metadatos [2/4] |  | 0.5d | 2017-11-29 09:00 | 2017-11-29 13:00 |  | 130.5d |  | start no earlier than 2017-11-29 09:00 | Adrián [21%]; Luis [21%]; Pablo [21%] | 2.52h | 50.4 |
| 83 | 2.3.20 | [PM] Realizar informe iteración 3 |  | 0.5d | 2017-11-29 09:00 | 2017-11-29 13:00 | 75, 76, 77, 80 | 130.5d | 0d | start no earlier than 2017-11-29 09:00 | Laura [25%]; Luis [25%]; Pablo [25%] | 3h | 60 |
| 84 | 2.3.21 | Objetivo iteración 3 | milestone | 0d | 2017-11-29 13:00 | 2017-11-29 13:00 | 83 | 130.5d |  | start no earlier than 2017-11-29 09:00 |  |  |  |

| ID | WBS | Task | Type | Duration | Start | Finish | Predecessors | Complete | Remaining | Actual start | Total slack | Free slack | Constraint |
| --- | --- | --- | --- | --- | --- | --- | --- | --- | --- | --- | --- | --- | --- |
| 85 | 2.4 | **Iteración 4** |  | 10d | 2017-11-30 09:00 | 2017-12-13 19:00 | 56 |  |  |  |  |  |  |
| 86 | 2.4.1 | [PM] Registrar tiempos y % de realización de tareas en Project (4/5) |  | 10d | 2017-11-30 09:00 | 2017-12-13 19:00 | 57 |  |  |  | 120d |  | finish no earlier than 2017-11-29 19:00 |
| 87 | 2.4.2 | [PM] Detallar plan iteraciones del mes de Diciembre. Creación Subtareas y precedencias en Project (2/2) |  | 1.2d | 2017-11-17 17:24 | 2017-11-20 19:00 | 24 |  |  |  | -13d | 0d | finish no earlier than 2017-11-20 19:00 |
| 88 | 2.4.3 | [PM] Detallar plan iteraciones del mes de Diciembre. Asignar recursos a las tareas en Project (2/2) |  | 1.2d | 2017-11-21 17:24 | 2017-11-22 19:00 |  |  |  |  | -21.25d | 0d | finish no earlier than 2017-11-22 19:00 |
| 89 | 2.4.4 | [PM] Aplicar el modelo EVA en Project |  | 2.25d | 2017-12-14 17:00 | 2017-12-18 19:00 |  |  |  |  | 117d |  | finish no earlier than 2017-12-18 19:00 |
| 90 | 2.4.5 | [V1] Sistema de gestión de eventos (Trigger System/Event Manager)[2/2] |  | 6.88d | 2017-11-30 09:57 | 2017-12-08 19:00 |  |  |  |  | 123d |  | finish no earlier than 2017-12-08 19:00 |
| 91 | 2.4.6 | [V1] Sistema de percepción sensorial (vista, oído, olfato, canales…)[2/2] |  | 6.25d | 2017-11-30 09:00 | 2017-12-08 11:00 | 88 |  |  |  | -26.25d | 0d |  |
| 92 | 2.4.7 | [V1] Hacer el sistema de toma de decisión con Lógica Difusa [3/3] |  | 6.25d | 2017-11-16 17:00 | 2017-11-24 19:00 | 42 |  |  |  | 133d |  | finish no earlier than 2017-11-24 19:00 |
| 93 | 2.4.8 | [V1] Hacer el sistema de Waypoints para pathfinding continuo [3/3] |  | 7.5d | 2017-11-24 15:00 | 2017-12-05 19:00 | 44 |  |  |  | 126d |  | finish no earlier than 2017-12-05 19:00 |
| 94 | 2.4.9 | [V2] Utilización de propiedades físicas en las mecánicas jugables |  | 1.88d | 2017-11-30 09:00 | 2017-12-01 18:02 |  |  |  |  | -21.88d | 0d |  |
| 95 | 2.4.10 | [V2] Formato propio para la definición de los niveles (documento con la especificación del formato) (2/2) |  | 1.25d | 2017-11-16 17:00 | 2017-11-17 19:00 |  |  |  |  | 138d |  | finish no earlier than 2017-11-17 19:00 |
| 96 | 2.4.11 | [V2] Mecánicas de acción |  | 1.88d | 2017-11-16 09:57 | 2017-11-17 19:00 |  |  |  |  | 138d |  | finish no earlier than 2017-11-17 19:00 |
| 97 | 2.4.12 | [V2] Implementación de cámara de seguimiento |  | 1.88d | 2017-11-30 09:00 | 2017-12-01 18:02 |  |  |  |  | -21.88d | 0d |  |
| 98 | 2.4.13 | [RV] Bocetos del entorno |  | 1d | 2017-11-30 09:00 | 2017-11-30 19:00 |  |  |  |  | -21d | 0d |  |
| 99 | 2.4.14 | Objetivo iteración 4 | milestone | 0d | 2017-12-08 11:00 | 2017-12-08 11:00 | 87, 88, 91, 94, 97, 98 |  |  |  | -26.25d | 0d |  |
| 100 | 2.5 | **Iteración 5** |  | 7d | 2017-12-14 09:00 | 2017-12-22 19:00 | 85 | 9% | 6.37d | 2017-11-02 09:00 |  |  |  |
| 101 | 2.5.1 | [PM] Registrar tiempos y % de realización de tareas en Project (5/5) |  | 0.45d | 2017-12-14 09:00 | 2017-12-14 12:36 | 87 |  |  |  | 21.55d | 13.3d |  |
| 102 | 2.5.2 | [PM] Comparar la planificación prevista y real en Project hito 1 |  | 2.25d | 2017-12-14 09:00 | 2017-12-18 11:00 |  |  |  |  | 14.5d | 0d |  |
| 103 | 2.5.3 | [PM] Confeccionar Informes de iteración e informe resumen de Hito 1 |  | 2.25d | 2017-12-18 11:00 | 2017-12-20 13:00 | 102 |  |  |  | 14.5d | 0d |  |
| 104 | 2.5.4 | [PM] Elaborar la presentación del Hito 1 |  | 1.5d | 2017-12-20 15:00 | 2017-12-21 19:00 | 103 |  |  |  | 14.5d | 0d |  |
| 105 | 2.5.5 | [PM] Exponer la presentación del Hito 1 |  | 1.5d | 2017-12-22 09:00 | 2017-12-25 13:00 | 104 |  |  |  | 14.5d | 6.25d |  |
| 106 | 2.5.6 | [V1] Acabar el documento de diseño de mecánicas de los NPCs |  | 0.5d | 2017-11-02 09:00 A | 2017-11-02 13:00 A |  | 100% |  |  |  |  | start no earlier than 2017-11-02 09:00 |
| 107 | 2.5.7 | [V1] Acabar el documento de diseño de toma de decisión: espacio y métodos |  | 0.94d | 2017-11-02 09:00 A | 2017-11-02 18:31 A |  | 100% |  |  |  |  | start no earlier than 2017-11-02 09:00 |
| 108 | 2.5.8 | [V1] Acabar el documento de diseño técnico del motor de IA |  | 0.94d | 2017-11-03 09:00 A | 2017-11-03 18:31 A |  | 100% |  |  |  |  | start no earlier than 2017-11-03 09:00 |
| 109 | 2.5.9 | [V1] Diseño de requerimientos y funciones de red |  | 1.25d | 2017-11-02 17:00 A | 2017-11-03 19:00 A |  | 100% |  |  |  |  | finish no earlier than 2017-11-03 19:00 |
| 110 | 2.5.10 | [V1] Diseño técnico del motor de red |  | 1.88d | 2017-11-02 09:57 A | 2017-11-03 19:00 A |  | 100% |  |  |  |  | finish no earlier than 2017-11-03 19:00 |
| 111 | 2.5.11 | [V1] Sistema de toma de decisión con Behaviour Trees |  | 4.38d | 2017-12-14 09:00 | 2017-12-20 12:02 |  |  |  |  | 17.62d | 9.37d |  |
| 112 | 2.5.12 | [V2] Diseño e implementación de la arquitectura basada en componentes (diagrama de clases e implementación) |  | 11.25d | 2017-12-14 09:00 | 2017-12-29 11:00 |  |  |  |  | 8.25d | 0d |  |
| 113 | 2.5.13 | [V2] Mecánicas básicas entidades sin IA |  | 2.5d | 2017-12-29 11:00 | 2018-01-02 17:00 | 112 |  |  |  | 8.25d | 0d |  |
| 114 | 2.5.14 | [TDS] Síntesis |  | 3.75d | 2017-12-15 16:02 | 2017-12-21 12:02 | 118 |  |  |  | 12.87d | 0d |  |
| 115 | 2.5.15 | [TDS] Grabaciones propias[2/2] |  | 3.75d | 2017-12-15 16:02 | 2017-12-21 12:02 | 118 |  |  |  | 16.62d | 8.37d |  |
| 116 | 2.5.16 | [TDS] Sonidos externos[2/2] |  | 3.75d | 2017-12-15 16:02 | 2017-12-21 12:02 | 118 |  |  |  | 16.62d | 8.37d |  |
| 117 | 2.5.17 | [TDS] Música |  | 3.75d | 2017-12-21 12:02 | 2017-12-27 10:02 | 114 |  |  |  | 12.87d | 4.62d |  |
| 118 | 2.5.18 | [TDS] Cue Sheet |  | 1.63d | 2017-12-14 09:00 | 2017-12-15 16:02 |  |  |  |  | 12.87d | 0d |  |
| 119 | 2.5.19 | [TDS] Hoja de metadatos |  | 1.88d | 2017-12-14 09:00 | 2017-12-15 18:02 |  |  |  |  | 20.12d | 11.87d |  |
| 120 | 2.5.20 | [TDS] Integración del motor de audio en el juego con prueba de concepto[2/2] |  | 3.75d | 2017-12-14 09:00 | 2017-12-19 17:00 |  |  |  |  | 18.25d | 10d |  |
| 121 | 2.5.21 | [PD] Vídeo con animación del logo de la empresa |  | 7.5d | 2017-12-14 09:00 | 2017-12-25 13:00 |  |  |  |  | 14.5d | 6.25d |  |
| 122 | 2.5.22 | Objetivo iteración 5 | milestone | 0d | 2018-01-02 17:00 | 2018-01-02 17:00 | 101, 102, 103, 104, 105, 111, 112, 113, 114, 115, 116, 117, 118, 119, 120, 121 |  |  |  | 8.25d |  |  |

| ID | WBS | Task | Duration | Start | Finish | Predecessors | Total slack |
| --- | --- | --- | --- | --- | --- | --- | --- |
| 123 | 3 | **Hito 2** | 16d | 2018-01-07 09:00 | 2018-01-26 19:00 | 13 |  |
| 124 | 3.1 | [PM] Revisar especificación proyecto | 3d | 2018-01-08 09:00 | 2018-01-10 19:00 |  | 77.5d |
| 125 | 3.2 | [PM] Reestimar proyecto | 3d | 2018-01-08 09:00 | 2018-01-10 19:00 |  | 77.5d |
| 126 | 3.3 | [PM] Detallar plan iteraciones del mes de Enero. Creación Subtareas y precedencias en Project | 1d | 2018-01-08 09:00 | 2018-01-08 19:00 |  | 79.5d |
| 127 | 3.4 | [PM] Detallar plan iteraciones del mes de Enero. Asignar recursos a las tareas en Project | 1d | 2018-01-08 09:00 | 2018-01-08 19:00 |  | 79.5d |
| 128 | 3.5 | [PM] Registrar tiempos y % de realización de tareas en Project | 0.63d | 2018-01-08 09:00 | 2018-01-08 16:02 |  | 79.87d |
| 129 | 3.6 | [PM] Comparar la planificación prevista y real en Project hito 2 | 0.63d | 2018-01-08 09:00 | 2018-01-08 16:02 |  | 79.87d |
| 130 | 3.7 | [PM] Confeccionar Informes de iteración e informe resumen de Hito 2 | 0.63d | 2018-01-08 09:00 | 2018-01-08 16:02 |  | 79.87d |
| 131 | 3.8 | [V1] Sistema de depuración visual in-game de la IA | 3.75d | 2018-01-08 09:00 | 2018-01-11 17:00 |  | 76.75d |
| 132 | 3.9 | [V1] Multijugador en tiempo real | 11.25d | 2018-01-08 09:00 | 2018-01-23 11:00 |  | 69.25d |
| 133 | 3.10 | [V2] Power-ups y elementos adicionales | 5d | 2018-01-08 09:00 | 2018-01-12 19:00 |  | 75.5d |
| 134 | 3.11 | [V2] Creación de un cargador de niveles | 3.13d | 2018-01-08 09:00 | 2018-01-11 10:02 |  | 77.37d |
| 135 | 3.12 | [V2] Gestión de colisiones de la cámara (sistema de depuración para ver colisiones) | 1.88d | 2018-01-08 09:00 | 2018-01-09 18:02 |  | 78.62d |
| 136 | 3.13 | [V2] Integración de librería para GUI | 0.63d | 2018-01-08 09:00 | 2018-01-08 16:02 |  | 79.87d |
| 137 | 4 | **Hito 3** | 35d | 2018-02-07 09:00 | 2018-03-27 19:00 | 123 |  |
| 138 | 4.1 | [PM] Detallar plan iteraciones del mes de Febrero-Marzo. Creación Subtareas y precedencias en Project | 1d | 2018-02-07 09:00 | 2018-02-07 19:00 |  | 68.75d |
| 139 | 4.2 | [PM] Detallar plan iteraciones del mes de Febrero-Marzo Asignar recursos a las tareas en Project | 1d | 2018-02-07 09:00 | 2018-02-07 19:00 |  | 68.75d |
| 140 | 4.3 | [PM] Registrar tiempos y % de realización de tareas en Project | 0.63d | 2018-02-07 09:00 | 2018-02-07 16:02 |  | 69.12d |
| 141 | 4.4 | [PM] Comparar la planificación prevista y real en Project hito 3 | 0.63d | 2018-02-07 09:00 | 2018-02-07 16:02 |  | 69.12d |
| 142 | 4.5 | [PM] Confeccionar Informes de iteración e informe resumen de Hito 3 | 0.63d | 2018-02-07 09:00 | 2018-02-07 16:02 |  | 69.12d |
| 143 | 4.6 | [PM] Elaborar la presentación del Hito 3 | 0.75d | 2018-02-07 09:00 | 2018-02-07 17:00 |  | 69d |
| 144 | 4.7 | [PM] Exponer la presentación del Hito 3 | 0.75d | 2018-02-07 09:00 | 2018-02-07 17:00 |  | 69d |
| 145 | 4.8 | [TAG] Estructura básica del nodo (array de hijos, puntero a padre, puntero a entidad, funcionalidad básica -constructor, destructor, gets, sets, manejo de hijos….) | 0.5d | 2018-02-07 09:00 | 2018-02-07 13:00 |  | 69.25d |
| 146 | 4.9 | [TAG] Recorrido-dibujado del árbol | 0.5d | 2018-02-07 09:00 | 2018-02-07 13:00 |  | 69.25d |
| 147 | 4.10 | [TAG] Estructura básica de la entidad (Constructor, destructor, funciones… todas virtuales, vacías) | 0.5d | 2018-02-07 09:00 | 2018-02-07 13:00 |  | 69.25d |
| 148 | 4.11 | [TAG] Matrices (model, view, projection) y pila estáticas y su manejo | 0.63d | 2018-02-07 09:00 | 2018-02-07 16:02 |  | 69.12d |
| 149 | 4.12 | [TAG] Estructura básica de la transformación (Constructor, destructor, matriz transformación…) | 0.5d | 2018-02-07 09:00 | 2018-02-07 13:00 |  | 69.25d |
| 150 | 4.13 | [TAG] Operaciones de transformación (trasladar, rotar, escalar, identidad, trasponer, invertir, todas con GLM) | 0.75d | 2018-02-07 09:00 | 2018-02-07 17:00 |  | 69d |
| 151 | 4.14 | [TAG] Dibujado (begindraw, enddraw, manejo pila y matriz model) | 0.75d | 2018-02-07 09:00 | 2018-02-07 17:00 |  | 69d |
| 152 | 4.15 | [TAG] Estructura básica de la cámara (Constructor, destructor, matriz proyección) | 0.38d | 2018-02-07 09:00 | 2018-02-07 12:02 |  | 69.37d |
| 153 | 4.16 | [TAG] Rellenar matriz perspectiva (con glm) | 0.25d | 2018-02-07 09:00 | 2018-02-07 11:00 |  | 69.5d |
| 154 | 4.17 | [TAG] Estructura básica de la luz (Constructor, destructor) | 0.38d | 2018-02-07 09:00 | 2018-02-07 12:02 |  | 69.37d |
| 155 | 4.18 | [TAG] Datos y funciones luz puntual | 0.38d | 2018-02-07 09:00 | 2018-02-07 12:02 |  | 69.37d |
| 156 | 4.19 | [TAG] Estructura básica de la malla (Constructor, destructor) | 0.38d | 2018-02-07 09:00 | 2018-02-07 12:02 |  | 69.37d |
| 157 | 4.20 | [TAG] Datos de mallas, texturas, materiales… (llamadas al gestor de recursos) | 0.5d | 2018-02-07 09:00 | 2018-02-07 13:00 |  | 69.25d |
| 158 | 4.21 | [TAG] Dibujado (begindraw, enddraw, matriz model…) | 0.63d | 2018-02-07 09:00 | 2018-02-07 16:02 |  | 69.12d |
| 159 | 4.22 | [TAG] Estructura básica del gestor de recursos (constructor, destructor, vectores de recursos) | 0.5d | 2018-02-07 09:00 | 2018-02-07 13:00 |  | 69.25d |
| 160 | 4.23 | [TAG] Obtener recurso (gestión adecuada de memoria) | 0.75d | 2018-02-07 09:00 | 2018-02-07 17:00 |  | 69d |
| 161 | 4.24 | [TAG] Estructura básica del recurso (constructor, destructor. Es virtual, vacío) | 0.38d | 2018-02-07 09:00 | 2018-02-07 12:02 |  | 69.37d |
| 162 | 4.25 | [TAG] Estructura básica de la malla (constructor, destructor) | 0.5d | 2018-02-07 09:00 | 2018-02-07 13:00 |  | 69.25d |
| 163 | 4.26 | [TAG] Lectura de disco (con assimp) | 0.75d | 2018-02-07 09:00 | 2018-02-07 17:00 |  | 69d |
| 164 | 4.27 | [TAG] Creación de buffers de vértices, normales, índices… y relleno | 1d | 2018-02-07 09:00 | 2018-02-07 19:00 |  | 68.75d |
| 165 | 4.28 | [TAG] Dibujado de las mallas (draw, con paso de los buffers a OpenGL) | 1d | 2018-02-07 09:00 | 2018-02-07 19:00 |  | 68.75d |
| 166 | 4.29 | [TAG] Estructura básica de la textura (constructor, destructor) | 0.25d | 2018-02-07 09:00 | 2018-02-07 11:00 |  | 69.5d |
| 167 | 4.30 | [TAG] Leer de disco (con librería) y rellenar buffers | 0.75d | 2018-02-07 09:00 | 2018-02-07 17:00 |  | 69d |
| 168 | 4.31 | [TAG] Dibujado (preparar las texturas y cargarlas en OpenGL) | 1d | 2018-02-07 09:00 | 2018-02-07 19:00 |  | 68.75d |
| 169 | 4.32 | [TAG] Estructura básica del material (constructor, destructor) | 0.25d | 2018-02-07 09:00 | 2018-02-07 11:00 |  | 69.5d |
| 170 | 4.33 | [TAG] Leer de disco (con librería o con parser propio) y rellenar valores | 0.63d | 2018-02-07 09:00 | 2018-02-07 16:02 |  | 69.12d |
| 171 | 4.34 | [TAG] Dibujado (preparar los materiales y cargarlos en OpenGL) | 0.5d | 2018-02-07 09:00 | 2018-02-07 13:00 |  | 69.25d |
| 172 | 4.35 | [TAG] Estructura básica del shader (constructor, destructor) | 0.5d | 2018-02-07 09:00 | 2018-02-07 13:00 |  | 69.25d |
| 173 | 4.36 | [TAG] Lectura de disco (con parser propio) y guardarlo | 0.88d | 2018-02-07 09:00 | 2018-02-07 18:02 |  | 68.87d |
| 174 | 4.37 | [TAG] Estructura básica de la fachada (constructor, destructor, inicialización motor y openGL) | 0.75d | 2018-02-07 09:00 | 2018-02-07 17:00 |  | 69d |
| 175 | 4.38 | [TAG] Funciones para crear cámaras y gestionarlas (manejo de las cámaras, registro, cálculo de la matriz view) | 1.25d | 2018-02-07 09:00 | 2018-02-08 11:00 |  | 68.5d |
| 176 | 4.39 | [TAG] Funciones para crear luces y gestionarlas (manejo de las luces registro, cálculo de la matriz light) | 0.75d | 2018-02-07 09:00 | 2018-02-07 17:00 |  | 69d |
| 177 | 4.40 | [TAG] Funciones para crear transformaciones (creación de varios nodos con las transformaciones, manejo de las transformaciones) | 0.75d | 2018-02-07 09:00 | 2018-02-07 17:00 |  | 69d |
| 178 | 4.41 | [TAG] Funciones para crear mallas y animaciones | 0.75d | 2018-02-07 09:00 | 2018-02-07 17:00 |  | 69d |
| 179 | 4.42 | [TAG] Funciones para crear shaders y gestionarlos | 0.75d | 2018-02-07 09:00 | 2018-02-07 17:00 |  | 69d |
| 180 | 4.43 | [TAG] Shader básico (Sombreado de Phong, reflexión de Phong) con materiales | 0.63d | 2018-02-07 09:00 | 2018-02-07 16:02 |  | 69.12d |
| 181 | 4.44 | [TAG] Integración con la aplicación | 3.75d | 2018-02-07 09:00 | 2018-02-12 17:00 |  | 66d |
| 182 | 4.45 | [TAG] Realización de una fachada genérica | 1.88d | 2018-02-07 09:00 | 2018-02-08 18:02 |  | 67.87d |
| 183 | 4.46 | [V1] Gestión de recursos de IA con Level-of-Detail (LoD) | 6.25d | 2018-02-07 09:00 | 2018-02-15 11:00 |  | 63.5d |
| 184 | 4.47 | [V1] Sistema de predicción de movimiento multijugador en tiempo real | 3.75d | 2018-02-07 09:00 | 2018-02-12 17:00 |  | 66d |
| 185 | 4.48 | [V1] Sistema de depuración visual del motor de Red | 3.75d | 2018-02-07 09:00 | 2018-02-12 17:00 |  | 66d |
| 186 | 4.49 | [V2] Diseño y creación de niveles | 5d | 2018-02-07 09:00 | 2018-02-13 19:00 |  | 64.75d |
| 187 | 4.50 | [V2] Implementación de menús | 3.75d | 2018-02-07 09:00 | 2018-02-12 17:00 |  | 66d |
| 188 | 4.51 | [V2] Implementación del HUD | 2.5d | 2018-02-07 09:00 | 2018-02-09 13:00 |  | 67.25d |
| 189 | 4.52 | [V2] Implementación de clipping (comparativa de FPS con/sin oclusiones) | 1.25d | 2018-02-07 09:00 | 2018-02-08 11:00 |  | 68.5d |
| 190 | 4.53 | [V2] Oclusiones mediante tecnicas de rasterización (comparativa de FPS con/sin oclusiones) | 1.25d | 2018-02-07 09:00 | 2018-02-08 11:00 |  | 68.5d |
| 191 | 4.54 | [V2] Sistema de Level-Of-Detail (LoD) para la selección de la malla gráfica de los objetos | 1.88d | 2018-02-07 09:00 | 2018-02-08 18:02 |  | 67.87d |
| 192 | 4.55 | [V2] Sistema de Level-Of-Detail continuo (CLoD) para el terreno | 3.13d | 2018-02-07 09:00 | 2018-02-12 10:02 |  | 66.62d |

| ID | WBS | Task | Duration | Start | Finish | Predecessors | Total slack |
| --- | --- | --- | --- | --- | --- | --- | --- |
| 193 | 4.56 | [V2] Creación e implementación del skybox | 3.13d | 2018-02-07 09:00 | 2018-02-12 10:02 |  | 66.62d |
| 194 | 4.57 | [TDS] Resto de la biblioteca (máx. 1/3), cuesheet y metadatos finales | 7.5d | 2018-02-07 09:00 | 2018-02-16 13:00 |  | 62.25d |
| 195 | 4.58 | [PD] Cartel juego/proyecto | 3.75d | 2018-02-07 09:00 | 2018-02-12 17:00 |  | 66d |
| 196 | 4.59 | [PD] Trailer juego/proyecto | 11.25d | 2018-02-07 09:00 | 2018-02-22 11:00 |  | 58.5d |
| 197 | 4.60 | [RV] Modelado de los personajes | 7.5d | 2018-02-07 09:00 | 2018-02-16 13:00 |  | 62.25d |
| 198 | 4.61 | [RV] Texturizado de los personajes | 6d | 2018-02-07 09:00 | 2018-02-14 19:00 |  | 63.75d |
| 199 | 4.62 | [RV] Modelado del entorno y elementos | 11d | 2018-02-07 09:00 | 2018-02-21 19:00 |  | 58.75d |
| 200 | 5 | **Hito 4** | 46d | 2018-03-28 09:00 | 2018-05-30 19:00 | 137 |  |
| 201 | 5.1 | [PM] Detallar plan iteraciones del mes de Abril-Mayo. Creación Subtareas y precedencias en Project | 1d | 2018-03-28 09:00 | 2018-03-28 19:00 |  | 45d |
| 202 | 5.2 | [PM] Detallar plan iteraciones del mes de Abril-Mayo. Asignar recursos a las tareas en Project | 1d | 2018-03-28 09:00 | 2018-03-28 19:00 |  | 45d |
| 203 | 5.3 | [PM] Registrar tiempos y % de realización de tareas en Project | 0.63d | 2018-03-28 09:00 | 2018-03-28 16:02 |  | 45.37d |
| 204 | 5.4 | [PM] Comparar la planificación prevista y real en Project hito 4 | 0.63d | 2018-03-28 09:00 | 2018-03-28 16:02 |  | 45.37d |
| 205 | 5.5 | [PM] Confeccionar Informes de iteración e informe resumen de Hito 4 | 0.63d | 2018-03-28 09:00 | 2018-03-28 16:02 |  | 45.37d |
| 206 | 5.6 | [PM] Elaborar la presentación del Hito 4 | 0.75d | 2018-03-28 09:00 | 2018-03-28 17:00 |  | 45.25d |
| 207 | 5.7 | [PM] Exponer la presentación del Hito 4 | 0.75d | 2018-03-28 09:00 | 2018-03-28 17:00 |  | 45.25d |
| 208 | 5.8 | [TAG] Datos y funciones luz dirigida | 0.63d | 2018-03-28 09:00 | 2018-03-28 16:02 |  | 45.37d |
| 209 | 5.9 | [TAG] Otros tipos de luces | 11.25d | 2018-03-28 09:00 | 2018-04-12 11:00 |  | 34.75d |
| 210 | 5.10 | [TAG] Estructura básica de la animación (Constructor, destructor) | 0.5d | 2018-03-28 09:00 | 2018-03-28 13:00 |  | 45.5d |
| 211 | 5.11 | [TAG] Datos de animaciones, mallas, texturas, materiales (multiples, con llamadas al gestor de recursos) | 0.63d | 2018-03-28 09:00 | 2018-03-28 16:02 |  | 45.37d |
| 212 | 5.12 | [TAG] Getión temporal de las animaciones (frames…) | 0.75d | 2018-03-28 09:00 | 2018-03-28 17:00 |  | 45.25d |
| 213 | 5.13 | [TAG] Dibujado (begindraw, enddraw, matriz model…) | 0.75d | 2018-03-28 09:00 | 2018-03-28 17:00 |  | 45.25d |
| 214 | 5.14 | [TAG] Shader Cartoon | 1.88d | 2018-03-28 09:00 | 2018-03-29 18:02 |  | 44.12d |
| 215 | 5.15 | [TAG] Shader light mapping | 1.88d | 2018-03-28 09:00 | 2018-03-29 18:02 |  | 44.12d |
| 216 | 5.16 | [TAG] Shader Deferred Shading | 2.75d | 2018-03-28 09:00 | 2018-03-30 17:00 |  | 43.25d |
| 217 | 5.17 | [TAG] Bounding boxes (incluye retocar nodos, entidades y recursos malla) | 1.5d | 2018-03-28 09:00 | 2018-03-29 13:00 |  | 44.5d |
| 218 | 5.18 | [TAG] Backface culling | 0.5d | 2018-03-28 09:00 | 2018-03-28 13:00 |  | 45.5d |
| 219 | 5.19 | [TAG] Frustum culling | 2.5d | 2018-03-28 09:00 | 2018-03-30 13:00 |  | 43.5d |
| 220 | 5.20 | [TAG] Shadow mapping | 3.13d | 2018-03-28 09:00 | 2018-04-02 10:02 |  | 42.87d |
| 221 | 5.21 | [TAG] Sombras volumétricas | 4.38d | 2018-03-28 09:00 | 2018-04-03 12:02 |  | 41.62d |
| 222 | 5.22 | [TAG] Sistema de partículas (sólo la incorporación en el motor) | 3.13d | 2018-03-28 09:00 | 2018-04-02 10:02 |  | 42.87d |
| 223 | 5.23 | [TAG] Billboards (sólo la parte de visualización) | 1.25d | 2018-03-28 09:00 | 2018-03-29 11:00 |  | 44.75d |
| 224 | 5.24 | [TAG] Skybox (sólo la incorporación en el motor) | 0.63d | 2018-03-28 09:00 | 2018-03-28 16:02 |  | 45.37d |
| 225 | 5.25 | [TAG] Otras | 4d | 2018-03-28 09:00 | 2018-04-02 19:00 |  | 42d |
| 226 | 5.26 | [V2] Multiplataforma con soporte para Windows | 5d | 2018-03-28 09:00 | 2018-04-03 19:00 |  | 41d |
| 227 | 5.27 | [V2] Implementación de nubes | 1.88d | 2018-03-28 09:00 | 2018-03-29 18:02 |  | 44.12d |
| 228 | 5.28 | [V2] Implementación de sistemas de partículas | 1.88d | 2018-03-28 09:00 | 2018-03-29 18:02 |  | 44.12d |
| 229 | 5.29 | [TDS] Integración de sonido y música en el juego | 3.75d | 2018-03-28 09:00 | 2018-04-02 17:00 |  | 42.25d |
| 230 | 5.30 | [TDS] Post producción (mezcla y masterización in-game) | 3.75d | 2018-03-28 09:00 | 2018-04-02 17:00 |  | 42.25d |
| 231 | 5.31 | [PD] Making of juego/proyecto | 11.25d | 2018-03-28 09:00 | 2018-04-12 11:00 |  | 34.75d |
| 232 | 5.32 | [PD] Créditos | 3.75d | 2018-03-28 09:00 | 2018-04-02 17:00 |  | 42.25d |
| 233 | 5.33 | [RV] Rigging de los personajes | 1d | 2018-03-28 09:00 | 2018-03-28 19:00 |  | 45d |
| 234 | 5.34 | [RV] Captura de movimiento | 5d | 2018-03-28 09:00 | 2018-04-03 19:00 |  | 41d |
| 235 | 5.35 | [RV] Animación de los personajes | 10d | 2018-03-28 09:00 | 2018-04-10 19:00 |  | 36d |
| 236 | 5.36 | [RV] Texturizado del entorno y elementos | 6.5d | 2018-03-28 09:00 | 2018-04-05 13:00 |  | 39.5d |
